# FINAL SCHEDULE ING UGH RJ 2007

Schedule from MS Project, 2013-09-12 to 2014-02-05, status date 2013-09-13.

## Calendars

- Standard: Mon-Fri 08:00-12:00, 13:00-17:00; Sat-Sun off.

## Schedule

| ID | WBS | Task | Duration | Start | Finish | Predecessors | Total slack | Constraint |
| --- | --- | --- | --- | --- | --- | --- | --- | --- |
| 1 | 1 | **1.0 CRISP** | 105d | 2013-09-12 | 2014-02-05 |  | 0d |  |
| 2 | 1.1 | **1.1 Conduct Data Gathering** | 14d | 2013-09-12 | 2013-10-01 |  | 0d |  |
| 3 | 1.1.1 | **1.1.1 Conduct Standards Research** | 7d | 2013-09-19 | 2013-09-27 |  | 0d |  |
| 4 | 1.1.1.1 | 1.1.1.1 Obtain GCAT Data | 7d | 2013-09-19 | 2013-09-27 | 13SS+5d | 0d |  |
| 5 | 1.1.1.2 | 1.1.1.2 Obtain SMP Data | 7d | 2013-09-19 | 2013-09-27 | 13SS+5d | 0d | start no earlier than 2013-09-19 |
| 6 | 1.1.1.3 | 1.1.1.3 Obtain Documents for BEST / AdEPT | 7d | 2013-09-19 | 2013-09-27 | 13SS+5d | 0d | start no earlier than 2013-09-19 |
| 7 | 1.1.1.4 | 1.1.1.4 Obtain T3 Data | 7d | 2013-09-19 | 2013-09-27 | 13SS+5d | 0d | start no earlier than 2013-09-19 |
| 8 | 1.1.2 | 1.1.2 Obtain Existing Frameworks | 7d | 2013-09-19 | 2013-09-27 | 12SS+5d | 0d |  |
| 9 | 1.1.3 | 1.1.3 Obtain Existing Reports and Templates | 7d | 2013-09-19 | 2013-09-27 | 12SS+5d | 0d |  |
| 10 | 1.1.4 | 1.1.4 Obtain M & E Manual | 7d | 2013-09-19 | 2013-09-27 | 12SS+5d | 0d |  |
| 11 | 1.1.5 | **1.1.5 Interview Project Managers** | 14d | 2013-09-12 | 2013-10-01 |  | 0d |  |
| 12 | 1.1.5.1 | 1.1.5.1 Interview Project Manager of M & E | 14d | 2013-09-12 | 2013-10-01 |  | 0d |  |
| 13 | 1.1.5.2 | 1.1.5.2 Interview Project Managers of the Project Delivery Team | 12d | 2013-09-12 | 2013-09-27 |  | 0d |  |
| 14 | 1.2 | **1.2 Analyze Data Gathered** | 5d | 2013-09-23 | 2013-09-27 |  | 0d |  |
| 15 | 1.2.1 | 1.2.1 Analyze GCAT Data | 5d | 2013-09-23 | 2013-09-27 | 4SS+2d | 0d |  |
| 16 | 1.2.2 | 1.2.2 Analyze SMP Data | 5d | 2013-09-23 | 2013-09-27 | 5SS+2d | 0d |  |
| 17 | 1.2.3 | 1.2.3 Analyze T3 Data | 5d | 2013-09-23 | 2013-09-27 | 7SS+2d | 0d |  |
| 18 | 1.2.4 | 1.2.4 Analyze BEST and AdEPT Data | 5d | 2013-09-23 | 2013-09-27 | 6SS+2d | 0d |  |
| 19 | 1.2.5 | 1.2.5 Analyze frameworks | 5d | 2013-09-23 | 2013-09-27 | 8SS+2d | 93d |  |
| 20 | 1.2.6 | 1.2.6 Analyze Existing Reports and Templates | 5d | 2013-09-23 | 2013-09-27 | 9SS+2d | 0d |  |
| 21 | 1.3 | **1.3 Formulate Policies and Procedures** | 17d | 2013-09-30 | 2013-10-22 |  | 0d |  |
| 22 | 1.3.1 | **1.3.1 Formulate Policy Content for BEST and AdEPT** | 9d | 2013-10-03 | 2013-10-15 |  | 0d |  |
| 23 | 1.3.1.1 | 1.3.1.1 Draft the Policy Content for BEST and AdEPT | 4d | 2013-10-03 | 2013-10-08 | 47SS+3d | 0d |  |
| 24 | 1.3.1.2 | 1.3.1.2 Evaluate the Policy Content for BEST and AdEPT | 3d | 2013-10-09 | 2013-10-11 | 23 | 0d |  |
| 25 | 1.3.1.3 | 1.3.1.3 Create Final Version of the Policy Content for BEST and AdEPT | 2d | 2013-10-14 | 2013-10-15 | 24 | 0d |  |

| ID | WBS | Task | Duration | Start | Finish | Predecessors | Total slack |
| --- | --- | --- | --- | --- | --- | --- | --- |
| 26 | 1.3.2 | **1.3.2 Formulate Policy Content for SMP Data Collection** | 9d | 2013-10-03 | 2013-10-15 |  | 0d |
| 27 | 1.3.2.1 | 1.3.2.1 Draft the Policy Content for SMP Data Collection | 4d | 2013-10-03 | 2013-10-08 | 47SS+3d | 0d |
| 28 | 1.3.2.2 | 1.3.2.2 Evaluate the Policy Content for SMP Data Collection | 3d | 2013-10-09 | 2013-10-11 | 27 | 0d |
| 29 | 1.3.2.3 | 1.3.2.3 Create a Final Version for the Policty Concten of SMP Data Collection | 2d | 2013-10-14 | 2013-10-15 | 28 | 0d |
| 30 | 1.3.3 | **1.3.3 Create Input Data Forms for BEST and AdEPT** | 5d | 2013-10-16 | 2013-10-22 |  | 0d |
| 31 | 1.3.3.1 | 1.3.3.1 Draft Input Data Forms for BEST and AdEPT | 2d | 2013-10-16 | 2013-10-17 | 22 | 0d |
| 32 | 1.3.3.2 | 1.3.3.2 Evaluate Input Data Forms for BEST and AdEPT | 2d | 2013-10-18 | 2013-10-21 | 31 | 0d |
| 33 | 1.3.3.3 | 1.3.3.3 Create Final Version of the Input Data Forms for BEST and AdEPT | 1d | 2013-10-22 | 2013-10-22 | 32 | 0d |
| 34 | 1.3.4 | **1.3.4 Create Input Data Forms for SMP Data Collection** | 5d | 2013-10-16 | 2013-10-22 |  | 0d |
| 35 | 1.3.4.1 | 1.3.4.1 Draft Input Data Forms for SMP | 2d | 2013-10-16 | 2013-10-17 | 26 | 0d |
| 36 | 1.3.4.2 | 1.3.4.2 Evaluate Input Data Forms for SMP Data Collection | 2d | 2013-10-18 | 2013-10-21 | 35 | 0d |
| 37 | 1.3.4.3 | 1.3.4.3 Create Final Version of the Input Data Forms for SMP Data Collection | 1d | 2013-10-22 | 2013-10-22 | 36 | 0d |
| 38 | 1.3.5 | **1.3.5 Create M & E Framework** | 14d | 2013-10-03 | 2013-10-22 |  | 0d |
| 39 | 1.3.5.1 | **1.3.5.1 Create M & E Report Templates** | 5d | 2013-10-16 | 2013-10-22 |  | 0d |
| 40 | 1.3.5.1.1 | 1.3.5.1.1 Draft M & E Report Templates | 2d | 2013-10-16 | 2013-10-17 | 43 | 0d |
| 41 | 1.3.5.1.2 | 1.3.5.1.2 Evaluate M & E Report Templates | 2d | 2013-10-18 | 2013-10-21 | 40 | 0d |
| 42 | 1.3.5.1.3 | 1.3.5.1.3 Create Final Version of M & E Report Templates | 1d | 2013-10-22 | 2013-10-22 | 41 | 0d |
| 43 | 1.3.5.2 | **1.3.5.2 Create M&E Policies and Procedures** | 9d | 2013-10-03 | 2013-10-15 |  | 0d |
| 44 | 1.3.5.2.1 | 1.3.5.2.1 Draft M&E Policies and Procedures | 4d | 2013-10-03 | 2013-10-08 | 47SS+3d | 0d |
| 45 | 1.3.5.2.2 | 1.3.5.2.2 Evaluate M&E Policies and Procedures | 3d | 2013-10-09 | 2013-10-11 | 44 | 0d |
| 46 | 1.3.5.2.3 | 1.3.5.2.3 Create Final Version of M&E Policies and Procedures | 2d | 2013-10-14 | 2013-10-15 | 45 | 0d |
| 47 | 1.3.6 | 1.3.6 Conduct Brainstorming Session | 15d | 2013-09-30 | 2013-10-18 | 15, 16, 17, 18, 20, 8, 9, 10 | 0d |
| 48 | 1.4 | **1.4 Researching for Technical Requirements** | 1d | 2013-10-28 | 2013-10-28 |  | 25d |
| 49 | 1.4.1 | 1.4.1 Research on Software Requirements | 1d | 2013-10-28 | 2013-10-28 | 60 | 25d |
| 50 | 1.4.2 | 1.4.2 Research on Hardware Requirements | 1d | 2013-10-28 | 2013-10-28 | 60 | 25d |
| 51 | 1.4.3 | 1.4.3 Research on Programming Language | 1d | 2013-10-28 | 2013-10-28 | 60 | 25d |

| ID | WBS | Task | Duration | Start | Finish | Predecessors | Total slack | Free slack |
| --- | --- | --- | --- | --- | --- | --- | --- | --- |
| 52 | 1.5 | **1.5 Create System Design** | 47d | 2013-10-02 | 2013-12-05 |  | 0d |  |
| 53 | 1.5.1 | 1.5.1 Generate the Functional Requirements Document | 2d | 2013-10-31 | 2013-11-01 | 61 | 21d |  |
| 54 | 1.5.2 | **1.5.2 Create a User Interface Design** | 16d | 2013-11-11 | 2013-12-02 |  | 0d |  |
| 55 | 1.5.2.1 | 1.5.2.1 Create a Wireframe | 2d | 2013-11-11 | 2013-11-12 | 64 | 0d |  |
| 56 | 1.5.2.2 | 1.5.2.2 Design Forms | 14d | 2013-11-13 | 2013-12-02 | 55 | 0d |  |
| 57 | 1.5.3 | **1.5.3 Generate a Data Flow Diagram** | 21d | 2013-10-02 | 2013-10-30 |  | 15d |  |
| 58 | 1.5.3.1 | 1.5.3.1 Create the Current Logical Data Flow Diagram | 3d | 2013-10-02 | 2013-10-04 | 4, 5, 6, 7, 12, 13 | 38d | 0d |
| 59 | 1.5.3.2 | 1.5.3.2 Create the Current Physical Dataflow Diagram | 3d | 2013-10-07 | 2013-10-09 | 58 | 38d |  |
| 60 | 1.5.3.3 | 1.5.3.3 Create the Proposed Logical Data Flow Diagram | 3d | 2013-10-23 | 2013-10-25 | 25, 29, 33, 37, 42, 46 | 0d |  |
| 61 | 1.5.3.4 | 1.5.3.4 Create the Proposed Physical Data flow Diagram | 3d | 2013-10-28 | 2013-10-30 | 60 | 0d |  |
| 62 | 1.5.4 | 1.5.4 Create the Data Dictionary | 2d | 2013-11-05 | 2013-11-06 | 64SS+3d | 18d | 0d |
| 63 | 1.5.5 | 1.5.5 Creating a Use Case Diagram | 3d | 2013-10-31 | 2013-11-04 | 61 | 20d |  |
| 64 | 1.5.6 | 1.5.6 Creating an Entity Relationship Diagram | 7d | 2013-10-31 | 2013-11-08 | 61 | 0d |  |
| 65 | 1.5.7 | 1.5.7 Creating a Logical Data Map | 2d | 2013-11-05 | 2013-11-06 | 64SS+3d | 18d | 0d |
| 66 | 1.5.8 | 1.5.8 Get System Design Approved | 3d | 2013-12-03 | 2013-12-05 | 62, 63, 64, 56, 55, 53, 59, 49, 50, 51 | 0d |  |
| 67 | 1.5.9 | 1.5.9 Get Database Design Approved | 3d | 2013-11-07 | 2013-11-11 | 62, 65 | 18d |  |
| 68 | 1.6 | **1.6 System Development** | 30d | 2013-12-06 | 2014-01-16 |  | 0d |  |
| 69 | 1.6.1 | 1.6.1 Develop System Prototype | 20d | 2013-12-06 | 2014-01-02 | 66, 67 | 0d |  |
| 70 | 1.6.2 | 1.6.2 Evaluation of System Prototype | 5d | 2014-01-03 | 2014-01-09 | 69 | 0d |  |
| 71 | 1.6.3 | 1.6.3 Generating the Final Version | 5d | 2014-01-10 | 2014-01-16 | 70 | 6d | 0d |
| 72 | 1.7 | **1.7 Conduct Testing** | 19d | 2014-01-03 | 2014-01-29 |  | 0d |  |
| 73 | 1.7.1 | **1.7.1 Generate Test Scenarios** | 10d | 2014-01-03 | 2014-01-16 |  | 0d |  |
| 74 | 1.7.1.1 | 1.7.1.1 Generate Tester Applications | 5d | 2014-01-10 | 2014-01-16 | 70 | 0d |  |
| 75 | 1.7.1.2 | 1.7.1.2 Generate Dummy Data | 1d | 2014-01-03 | 2014-01-03 | 69 | 9d |  |
| 76 | 1.7.1.3 | 1.7.1.3 Generate Test Cases | 2d | 2014-01-03 | 2014-01-06 | 69 | 8d |  |
| 77 | 1.7.2 | 1.7.2 Conduct Alpha Testing | 3d | 2014-01-17 | 2014-01-21 | 74, 75, 76 | 0d |  |
| 78 | 1.7.3 | 1.7.3 Conduct Beta Testing | 3d | 2014-01-22 | 2014-01-24 | 77 | 0d |  |
| 79 | 1.7.4 | 1.7.4 Conduct Stress Testing | 3d | 2014-01-27 | 2014-01-29 | 78 | 0d |  |

| ID | WBS | Task | Duration | Start | Finish | Predecessors | Total slack | Free slack |
| --- | --- | --- | --- | --- | --- | --- | --- | --- |
| 80 | 1.8 | **1.8 Create Manuals** | 94d | 2013-09-19 | 2014-01-28 |  | 6d |  |
| 81 | 1.8.1 | **1.8.1 Create Operational Manual** | 8d | 2014-01-17 | 2014-01-28 |  | 6d |  |
| 82 | 1.8.1.1 | 1.8.1.1 Draft Operational Manual | 4d | 2014-01-17 | 2014-01-22 | 71 | 6d | 0d |
| 83 | 1.8.1.2 | 1.8.1.2Evaluate Operational Manual | 3d | 2014-01-23 | 2014-01-27 | 82 | 6d | 0d |
| 84 | 1.8.1.3 | 1.8.1.3 Create Final Version of Operational Manual | 1d | 2014-01-28 | 2014-01-28 | 83 | 6d |  |
| 85 | 1.8.2 | **1.8.2 Create User Manual** | 59d | 2013-09-19 | 2013-12-10 |  | 41d |  |
| 86 | 1.8.2.1 | 1.8.2.1 Draft User Manual | 55d | 2013-09-19 | 2013-12-04 | 2SS+5d | 41d | 0d |
| 87 | 1.8.2.2 | 1.8.2.2 Evaluate User Manual | 3d | 2013-12-05 | 2013-12-09 | 86 | 41d | 0d |
| 88 | 1.8.2.3 | 1.8.2.3 Create Final Version of User Manual | 1d | 2013-12-10 | 2013-12-10 | 87 | 41d |  |
| 89 | 1.9 | **1.9 Implementing the CRISP** | 6d | 2014-01-27 | 2014-02-03 |  | 0d |  |
| 90 | 1.9.1 | **1.9.1 Installation** | 3d | 2014-01-27 | 2014-01-29 |  | 0d |  |
| 91 | 1.9.1.1 | 1.9.1.1 Install System onsite | 3d | 2014-01-27 | 2014-01-29 | 78 | 0d |  |
| 92 | 1.9.1.2 | 1.9.1.2 Set-up Network | 2d | 2014-01-27 | 2014-01-28 | 78 | 1d |  |
| 93 | 1.9.2 | 1.9.2 On Site Testing | 1d | 2014-01-30 | 2014-01-30 | 79, 90 | 0d |  |
| 94 | 1.9.3 | 1.9.3 Conduct User Training | 2d | 2014-01-31 | 2014-02-03 | 91, 93 | 0d |  |
| 95 | 1.10 | 1.10 Go Live | 1d | 2014-02-04 | 2014-02-04 | 94 | 0d |  |
| 96 | 1.11 | 1.11 Project Sign-Off | 1d | 2014-02-05 | 2014-02-05 | 95 | 0d |  |
